Schedule from MS Project, 2021-03-01 to 2021-04-05, 24 hours a day, A marks actual dates.
Microsoft

## Calendars

- 24 小时: Mon-Sun 00:00-24:00. Exceptions (off unless hours are given): 2021-03-03 to 2021-03-11 05:00-22:00 (基础准备阶段).

## Resources

| Resource |
| --- |
| 姜浩 |
| 杨立志 |
| 陆炎 |
| 臧含 |
| 电气人员 |
| 机械人员 |
| 液压人员 |
| 陈田风 |

## Schedule

| ID | WBS | Task | Duration | Start | Finish | Predecessors | Complete | Remaining | Baseline start | Baseline finish | Baseline duration | Total slack | Constraint | Resources | Work | Actual work |
| --- | --- | --- | --- | --- | --- | --- | --- | --- | --- | --- | --- | --- | --- | --- | --- | --- |
| 1 | 1 | **装配** | 3.81d | 2021-03-01 A | 2021-03-06 |  | 58% | 1.6d | 2021-03-01 | 2021-03-06 | 4.83d | 0.71d |  |  | 121.5h | 70.5h |
| 2 | 1.1 | 未上轨装配 | 0.98d | 2021-03-01 A | 2021-03-02 A |  | 100% |  | 2021-03-01 | 2021-03-03 | 2d |  | start no earlier than 2021-03-01 | 机械人员; 液压人员; 电气人员 | 70.5h | 70.5h |
| 3 | 1.2 | 上轨装配 | 17h | 2021-03-05 | 2021-03-06 | 9 |  |  | 2021-03-06 | 2021-03-06 | 17h | 0.71d |  | 机械人员; 液压人员; 电气人员 | 51h |  |
| 4 | 2 | **功能实现阶段** | 17.38d? | 2021-03-02 | 2021-03-22 |  |  |  | 2021-03-03 | 2021-03-23 | 17.38d? | 0d |  |  | 749h |  |
| 5 | 2.1 | **通信及信号测试** | 0.71d? | 2021-03-02 | 2021-03-03 | 2 |  |  | 2021-03-03 | 2021-03-03 | 0.71d? | 0d |  |  | 49h |  |
| 6 | 2.1.1 | 传感器数值校验等 | 15h? | 2021-03-02 | 2021-03-03 |  |  |  | 2021-03-03 | 2021-03-03 | 15h? | 0d |  | 姜浩; 电气人员; 臧含 | 45h |  |
| 7 | 2.1.2 | 行走缸/举升缸零点配置 | 2h? | 2021-03-03 | 2021-03-03 | 6 |  |  | 2021-03-03 | 2021-03-03 | 2h? | 0d |  | 姜浩; 臧含 | 4h |  |
| 8 | 2.2 | 急停和恢复 | 17h | 2021-03-03 | 2021-03-04 | 5 |  |  | 2021-03-04 | 2021-03-04 | 17h | 0d |  | 姜浩; 电气人员; 陆炎 | 51h |  |
| 9 | 2.3 | **一阶段测试（设备未上轨）** | 0.71d? | 2021-03-04 | 2021-03-05 | 8 |  |  | 2021-03-05 | 2021-03-05 | 0.71d? | 0d |  | 姜浩; 杨立志 | 34h |  |
| 10 | 2.3.1 | 行走缸/举升缸开环伸缩（不考虑死区) | 5h? | 2021-03-04 | 2021-03-04 | 8 |  |  | 2021-03-05 | 2021-03-05 | 5h? | 0d |  |  |  |  |
| 11 | 2.3.2 | 行走缸/举升缸闭环伸缩（简单PI) | 2h? | 2021-03-04 | 2021-03-04 | 10 |  |  | 2021-03-05 | 2021-03-05 | 2h? | 0d |  |  |  |  |
| 12 | 2.3.3 | 前后锁紧块锁销动作 | 1h? | 2021-03-04 | 2021-03-04 | 11 |  |  | 2021-03-05 | 2021-03-05 | 1h? | 0d |  |  |  |  |
| 13 | 2.3.4 | 六种单步工艺校验 | 9h? | 2021-03-04 | 2021-03-05 | 12 |  |  | 2021-03-05 | 2021-03-05 | 9h? | 0d |  |  |  |  |
| 14 | 2.4 | **二阶段测试（配合上轨装配/连接测试)** | 1.42d? | 2021-03-05 | 2021-03-07 | 9 |  |  | 2021-03-06 | 2021-03-07 | 1.42d? | 0d |  |  | 68h |  |
| 15 | 2.4.1 | 配合机械/电气装配 | 17h? | 2021-03-05 | 2021-03-06 |  |  |  | 2021-03-06 | 2021-03-06 | 17h? | 0d |  | 杨立志; 臧含 | 34h |  |
| 16 | 2.4.2 | 测试上轨后行走缸移动是否顺滑 | 17h? | 2021-03-06 | 2021-03-07 | 15 |  |  | 2021-03-07 | 2021-03-07 | 17h? | 0d |  | 姜浩; 陆炎 | 34h |  |
| 17 | 2.5 | **液压开环** | 0.71d? | 2021-03-07 | 2021-03-08 | 14, 3 |  |  | 2021-03-08 | 2021-03-08 | 0.71d? | 0d |  | 姜浩; 陈田风 | 34h |  |
| 18 | 2.5.1 | 行走缸/举升缸死区确认 | 5h? | 2021-03-07 | 2021-03-07 |  |  |  | 2021-03-08 | 2021-03-08 | 5h? | 0d |  |  |  |  |
| 19 | 2.5.2 | 行走缸/举升缸最大速度确认 | 12h? | 2021-03-07 | 2021-03-08 | 18 |  |  | 2021-03-08 | 2021-03-08 | 12h? | 0d |  |  |  |  |
| 20 | 2.6 | **锁销动作** | 0.71d? | 2021-03-08 | 2021-03-09 | 17 |  |  | 2021-03-09 | 2021-03-09 | 0.71d? | 0d |  | 液压人员; 陆炎; 姜浩 | 51h |  |
| 21 | 2.6.1 | 利用开环控制手动完成一次爬行 | 17h? | 2021-03-08 | 2021-03-09 |  |  |  | 2021-03-09 | 2021-03-09 | 17h? | 0d |  |  |  |  |
| 22 | 2.6.2 | 确认一步和半步的孔距 | 17h? | 2021-03-08 | 2021-03-09 |  |  |  | 2021-03-09 | 2021-03-09 | 17h? | 0d |  |  |  |  |
| 23 | 2.7 | **液压闭环** | 1.42d? | 2021-03-09 | 2021-03-11 | 20 |  |  | 2021-03-10 | 2021-03-11 | 1.42d? | 0d |  | 姜浩; 杨立志; 臧含 | 102h |  |
| 24 | 2.7.1 | 行走缸闭环 | 17h? | 2021-03-09 | 2021-03-10 |  |  |  | 2021-03-10 | 2021-03-10 | 17h? | 0d |  |  |  |  |
| 25 | 2.7.2 | 举升缸闭环 | 17h | 2021-03-10 | 2021-03-11 | 24 |  |  | 2021-03-11 | 2021-03-11 | 17h | 0d |  |  |  |  |
| 26 | 2.8 | 手动/单步调试（手动操作) | 2d? | 2021-03-11 | 2021-03-13 | 23 |  |  | 2021-03-12 | 2021-03-14 | 2d? | 0d |  |  |  |  |

Notes:
- 19: 可能有危险，损坏元器件，可以考虑不做

| ID | WBS | Task | Duration | Start | Finish | Predecessors | Baseline start | Baseline finish | Baseline duration | Total slack | Resources | Work |
| --- | --- | --- | --- | --- | --- | --- | --- | --- | --- | --- | --- | --- |
| 27 | 2.9 | **自动任务（单步操作)** | 3d? | 2021-03-13 | 2021-03-16 | 26 | 2021-03-14 | 2021-03-17 | 3d? | 0d |  | 144h |
| 28 | 2.9.1 | 顺逆一步 | 12h? | 2021-03-13 | 2021-03-14 |  | 2021-03-14 | 2021-03-14 | 12h? | 0d | 姜浩; 陆炎 | 24h |
| 29 | 2.9.2 | 逆顺一步 | 12h? | 2021-03-14 | 2021-03-14 | 28 | 2021-03-14 | 2021-03-15 | 12h? | 0d | 杨立志; 臧含 | 24h |
| 30 | 2.9.3 | 中逆半步 | 12h? | 2021-03-14 | 2021-03-15 | 29 | 2021-03-15 | 2021-03-15 | 12h? | 0d | 姜浩; 陆炎 | 24h |
| 31 | 2.9.4 | 逆中半步 | 12h? | 2021-03-15 | 2021-03-15 | 30 | 2021-03-15 | 2021-03-16 | 12h? | 0d | 杨立志; 臧含 | 24h |
| 32 | 2.9.5 | 中顺半步 | 12h? | 2021-03-15 | 2021-03-16 | 31 | 2021-03-16 | 2021-03-16 | 12h? | 0d | 姜浩; 陆炎 | 24h |
| 33 | 2.9.6 | 顺中半步 | 12h? | 2021-03-16 | 2021-03-16 | 32 | 2021-03-16 | 2021-03-17 | 12h? | 0d | 杨立志; 臧含 | 24h |
| 34 | 2.10 | **自动复合** | 3d? | 2021-03-16 | 2021-03-19 | 27 | 2021-03-17 | 2021-03-20 | 3d? | 0d |  | 144h |
| 35 | 2.10.1 | 中逆移动 | 24h? | 2021-03-16 | 2021-03-17 | 27 | 2021-03-17 | 2021-03-18 | 24h? | 0d | 姜浩; 陆炎 | 48h |
| 36 | 2.10.2 | 逆中移动 | 12h? | 2021-03-17 | 2021-03-18 | 35 | 2021-03-18 | 2021-03-18 | 12h? | 0d | 杨立志; 臧含 | 24h |
| 37 | 2.10.3 | 中顺移动 | 24h? | 2021-03-18 | 2021-03-19 | 36 | 2021-03-18 | 2021-03-19 | 24h? | 0d | 姜浩; 陆炎 | 48h |
| 38 | 2.10.4 | 顺中移动 | 12h? | 2021-03-19 | 2021-03-19 | 37 | 2021-03-19 | 2021-03-20 | 12h? | 0d | 杨立志; 臧含 | 24h |
| 39 | 2.11 | 稳定性 | 72h | 2021-03-19 | 2021-03-22 | 34 | 2021-03-20 | 2021-03-23 | 72h | 0d | 电气人员 | 72h |
| 40 | 3 | 完善优化阶段 | 14d? | 2021-03-22 | 2021-04-05 | 4 | 2021-03-23 | 2021-04-06 | 14d? | 0d |  |  |
